# 结构及ID设计

Schedule from a web Gantt chart, 2025-08-27 to 2025-08-27.
Saturdays and Sundays are off

## Schedule

| ID | WBS | Task | Duration | Start | Finish |
| --- | --- | --- | --- | --- | --- |
| 2 | 1 | 外观设计初稿 | 1d | 2025-08-27 | 2025-08-27 |
